# Hyperscale Data Centre 45MW EN 50600 Class 3 (Ireland)

Schedule from Primavera P6, 2027-01-04 to 2030-05-20, data date 2027-01-04, costs in EUR.
Must finish by 2030-05-20

## Resources

| Resource | Group |
| --- | --- |
| Statutory Planning, Legal & EirGrid Deposit | material |
| ISO 19650 Lead Architect & Engineering Design | labor |
| EU OFCI Long-Lead Critical Plant & Equipment | material |
| Civil, 750 CFA Piling, Superstructure & Shell |  |
| 110kV GIS Substation, White Space & Heat Reuse |  |
| CIBSE/ASHRAE Commissioning & 45MW IST Load Banks | labor |
| Statutory Handover, BCAR CCC & EirGrid Sync | labor |

## Schedule

| ID | WBS | Activity | Type | Duration | Start | Finish | Predecessors | Total float | Free float | Resources | Cost |
| --- | --- | --- | --- | --- | --- | --- | --- | --- | --- | --- | --- |
|  | 1.0-PERM | **1.0 Planning (SID), EPA IEL & EirGrid / CRU Approvals** |  |  | 2027-01-04 | 2027-10-18 |  |  |  |  |  |
| A1010 |  | Appoint Statutory PSDP, Design Certifier & Planning Team (SI 291/2013) |  | 15d | 2027-01-04 | 2027-01-25 | M1000 | 15d | 0d | Statutory Planning, Legal & EirGrid Deposit [120] | 350,000 |
| A1020 |  | Pre-Planning Section 247 Consultation (Local Authority / ABP SID) |  | 30d | 2027-01-04 | 2027-02-15 | M1000 | 0d |  | Statutory Planning, Legal & EirGrid Deposit [240] | 4,500,000 |
| A1060 |  | EirGrid / ESB Networks 60MVA MIC Offer & CRU Dispatchable BESS Plan (45MW) |  | 80d | 2027-01-04 | 2027-04-26 | M1000 | 70d | 0d | Statutory Planning, Legal & EirGrid Deposit [640] | 150,000 |
| M1000 |  | RIBA Stage 1 Notice to Proceed & Land Option Milestone | milestone | 0d | 2027-01-04 | 2027-01-04 |  | 0d |  | Statutory Planning, Legal & EirGrid Deposit [1] |  |
| A1030 |  | Compile EIAR, Acoustic Study, Drainage & Biodiversity Appraisal |  | 50d | 2027-02-15 | 2027-04-26 | A1010, A1020 | 0d |  | Statutory Planning, Legal & EirGrid Deposit [400] | 750,000 |
| A1040 |  | Statutory Planning Permission / SID Determination & Final Grant |  | 75d | 2027-04-26 | 2027-08-09 | A1030 | 0d |  | Statutory Planning, Legal & EirGrid Deposit [600] | 1,200,000 |
| A1050 |  | EPA Industrial Emissions Licence (IEL) Application & Determination |  | 85d | 2027-04-26 | 2027-08-23 | A1030 | 25d | 0d | Statutory Planning, Legal & EirGrid Deposit [680] | 250,000 |
| A1070 |  | EirGrid Demand Connection Code Dynamic RMS Grid-Code Study (60MVA) |  | 40d | 2027-04-26 | 2027-06-21 | A1060, A2050 | 70d | 0d | Statutory Planning, Legal & EirGrid Deposit [320] | 100,000 |
| A1080 |  | BCMS Fire Safety Certificate (FSC) & Disability Access Cert (DAC) |  | 35d | 2027-08-09 | 2027-09-27 | A1040, A2040, A2100 | 0d |  | Statutory Planning, Legal & EirGrid Deposit [280] | 5,000,000 |
| A1085 |  | Appoint Statutory PSCS, Submit HSA AF1 & BCAR Commencement Notice |  | 15d | 2027-09-27 | 2027-10-18 | A1050, A1080, A1070 | 0d |  | Statutory Planning, Legal & EirGrid Deposit [120] | 200,000 |
| M1090 |  | All Irish Statutory Planning, EPA IEL & BCAR Clearances Milestone | milestone | 0d | 2027-10-18 | 2027-10-18 | A1085 | 0d |  | Statutory Planning, Legal & EirGrid Deposit [1] |  |
|  | 2.0-ENG | **2.0 ISO 19650 BIM Design, EN 50600 & BCAR FSC/DAC** |  |  | 2027-01-04 | 2027-07-12 |  |  |  |  |  |
| A2010 |  | ISO 19650 BIM Execution Plan (BEP) & Common Data Environment Setup |  | 15d | 2027-01-04 | 2027-01-25 | M1000 | 35d | 0d | ISO 19650 Lead Architect & Engineering Design [120 h] | 400,000 |
| A2020 |  | Ground Investigation (GI) Boreholes & Geophysical Soil Report |  | 25d | 2027-01-04 | 2027-02-08 | M1000 | 25d | 0d | ISO 19650 Lead Architect & Engineering Design [200 h] | 1,800,000 |
| A2050 |  | 110kV GIS Substation Protection, Earthing & EirGrid Interface Design |  | 40d | 2027-01-25 | 2027-03-22 | A2010 | 95d | 0d | ISO 19650 Lead Architect & Engineering Design [320 h] | 2,500,000 |
| A2070 |  | Low-GWP CHW Plant, District Heat Recovery (ERF) & Free-Cooling P&ID |  | 40d | 2027-01-25 | 2027-03-22 | A2010 | 305d | 0d | ISO 19650 Lead Architect & Engineering Design [320 h] | 850,000 |
| A2030 |  | Piling, SuDS Attenuation & Structural Steel RIBA Stage 4 IFC |  | 35d | 2027-02-08 | 2027-03-29 | A2010, A2020 | 25d | 0d | ISO 19650 Lead Architect & Engineering Design [280 h] | 2,200,000 |
| A2060 |  | EN 50600 Class 3 MV/LV Distribution & Arc-Flash / Fault Study |  | 45d | 2027-03-22 | 2027-05-24 | A2050 | 290d | 0d | ISO 19650 Lead Architect & Engineering Design [360 h] | 650,000 |
| A2080 |  | White Space CFD Thermal Modeling (EN 50600-2-3 / ASHRAE TC9.9) |  | 30d | 2027-03-22 | 2027-05-03 | A2070 | 305d | 0d | ISO 19650 Lead Architect & Engineering Design [240 h] | 350,000 |
| A2040 |  | Precast Shell, Part B Fire Compartmentation & Acoustic Specification |  | 40d | 2027-03-29 | 2027-05-24 | A2030 | 25d | 0d | ISO 19650 Lead Architect & Engineering Design [320 h] | 4,500,000 |
| A2090 |  | BMS, EPMS & EU EED (2023/1791) PUE/WUE/ERF Automated Telemetry Schema |  | 35d | 2027-05-24 | 2027-07-12 | A2060, A2080 | 290d | 0d | ISO 19650 Lead Architect & Engineering Design [280 h] | 750,000 |
| A2100 |  | VESDA, Water-Mist / Novec & Part B BCAR Fire Engineering Strategy |  | 30d | 2027-05-24 | 2027-07-05 | A2040 | 25d | 0d | ISO 19650 Lead Architect & Engineering Design [240 h] | 800,000 |
| M2110 |  | RIBA Stage 4 Technical Design Freeze & ISO 19650 Sign-Off | milestone | 0d | 2027-07-12 | 2027-07-12 | A2030, A2040, A2050, A2060, A2070, A2080, A2090, A2100 | 290d | 0d | ISO 19650 Lead Architect & Engineering Design [1 h] |  |

| ID | WBS | Activity | Type | Duration | Start | Finish | Predecessors | Total float | Free float | Resources | Cost |
| --- | --- | --- | --- | --- | --- | --- | --- | --- | --- | --- | --- |
|  | 3.0-PROC | **3.0 EU Long-Lead Procurement, FAT & Logistics** |  |  | 2027-07-12 | 2028-01-03 |  |  |  |  |  |
| A3010 |  | Manufacture & FAT 110kV/22kV Grid Transformers (2x 63MVA Low-Loss) |  | 95d | 2027-07-12 | 2027-11-22 | M2110 | 305d | 0d | EU OFCI Long-Lead Critical Plant & Equipment [760] | 18,500,000 |
| A3020 |  | Manufacture & FAT 22kV SF6-Free GIS Medium Voltage Switchgear |  | 95d | 2027-07-12 | 2027-11-22 | M2110 | 320d | 0d | EU OFCI Long-Lead Critical Plant & Equipment [760] | 22,500,000 |
| A3030 |  | Manufacture & FAT HVO-Ready Standby Gensets with SCR (20x 2.5MVA) |  | 110d | 2027-07-12 | 2027-12-13 | M2110 | 290d | 0d | EU OFCI Long-Lead Critical Plant & Equipment [880] | 16,500,000 |
| A3040 |  | Procure & Deliver Double-Skin Bunded HVO Biofuel Tanks (4x 80m3) |  | 80d | 2027-07-12 | 2027-11-01 | M2110 | 335d | 0d | EU OFCI Long-Lead Critical Plant & Equipment [640] | 11,500,000 |
| A3045 |  | Manufacture & FAT CRU-Compliant On-Site Grid Support BESS Containers |  | 80d | 2027-07-12 | 2027-11-01 | M2110 | 335d | 0d | EU OFCI Long-Lead Critical Plant & Equipment [640] | 7,000,000 |
| A3050 |  | Manufacture & FAT Modular Static UPS Systems (45x 1000kVA) |  | 95d | 2027-07-12 | 2027-11-22 | M2110 | 305d | 0d | EU OFCI Long-Lead Critical Plant & Equipment [760] | 5,800,000 |
| A3060 |  | Procure Busway Trunking (7000A), MSB-A/B & Static Transfer Gear |  | 70d | 2027-07-12 | 2027-10-18 | M2110 | 345d | 0d | EU OFCI Long-Lead Critical Plant & Equipment [560] | 3,200,000 |
| A3070 |  | Manufacture & FAT Low-GWP Free-Cooling Chillers & Heat-Reuse HEX (8x 1200RT) |  | 105d | 2027-07-12 | 2027-12-06 | M2110 | 295d | 0d | EU OFCI Long-Lead Critical Plant & Equipment [840] | 1,200,000 |
| A3080 |  | Manufacture & Deliver 90x EC-Fan CRAH Units & Closed-Circuit Coolers |  | 80d | 2027-07-12 | 2027-11-01 | M2110 | 335d | 0d | EU OFCI Long-Lead Critical Plant & Equipment [640] | 1,800,000 |
| A3090 |  | Procure EN 50600-2-5 Class 4 Perimeter Security & Biometric Gates |  | 60d | 2027-07-12 | 2027-10-04 | M2110 | 355d | 0d | EU OFCI Long-Lead Critical Plant & Equipment [480] | 1,500,000 |
| A3100 |  | Procure EPMS, BMS DDC Panels & EU EED (2024/1364) Revenue Meters |  | 50d | 2027-07-12 | 2027-09-20 | M2110 | 365d | 0d | EU OFCI Long-Lead Critical Plant & Equipment [400] | 1,400,000 |
| A3015 |  | EU Ro-Ro Sea Transit & Garda-Escorted Heavy Haulage (63MVA Units) |  | 15d | 2027-11-22 | 2027-12-13 | A3010 | 305d | 0d | EU OFCI Long-Lead Critical Plant & Equipment [120] | 13,000,000 |
| A3055 |  | Port Clearance & On-Site Staging of UPS & LFP Battery Racks |  | 15d | 2027-11-22 | 2027-12-13 | A3050 | 305d | 0d | EU OFCI Long-Lead Critical Plant & Equipment [120] | 4,200,000 |
| A3075 |  | Abnormal-Load Haulage & Staging of Chillers & District Heating HEX |  | 15d | 2027-12-06 | 2027-12-27 | A3070 | 295d | 0d | EU OFCI Long-Lead Critical Plant & Equipment [120] | 1,600,000 |
| A3035 |  | Dublin Port Transit & Heavy Crane Offload of 20x Stage V Gensets |  | 15d | 2027-12-13 | 2028-01-03 | A3030 | 290d | 0d | EU OFCI Long-Lead Critical Plant & Equipment [120] | 14,800,000 |
| M3120 |  | EU Long-Lead Plant Manufactured & Delivered On-Site Milestone | milestone | 0d | 2028-01-03 | 2028-01-03 | A3015, A3020, A3035, A3040, A3045, A3055, A3060, A3075, A3080, A3090, A3100 | 290d | 0d | EU OFCI Long-Lead Critical Plant & Equipment [1] |  |
|  | 4.0-CIVIL | **4.0 Enabling, Shell, Core & Site Security (PSCS)** |  |  | 2027-10-18 | 2029-02-12 |  |  |  |  |  |
|  | 4.1-SUB | **4.1 Piling, Foundations & Deep Attenuation Tanks** |  |  | 2027-10-18 | 2028-05-29 |  |  |  |  |  |
| A4110 |  | PSCS Site Mobilisation, Enabling Earthworks & Safe Access Setup |  | 30d | 2027-10-18 | 2027-11-29 | M1090 | 0d |  | Civil, 750 CFA Piling, Superstructure & Shell [240 h] | 1,800,000 |
| A4120 |  | Continuous Flight Auger (CFA) Concrete Piling (750 Piles) |  | 55d | 2027-11-29 | 2028-02-14 | A4110 | 0d |  | Civil, 750 CFA Piling, Superstructure & Shell [440 h] | 2,500,000 |
| A4130 |  | Pile Integrity Testing (PIT), Cropping & Pile Caps (BCAR Witnessed) |  | 15d | 2028-02-14 | 2028-03-06 | A4120 | 0d |  | Civil, 750 CFA Piling, Superstructure & Shell [120 h] | 8,500,000 |
| A4140 |  | Deep Reinforced Raft Foundation, Plinths & Radon Barrier Membrane (5-Hall Bay) |  | 40d | 2028-03-06 | 2028-05-01 | A4130 | 0d |  | Civil, 750 CFA Piling, Superstructure & Shell [320 h] | 5,200,000 |
| A4150 |  | Below-Grade Earth Mat Grid, Sub-Base Services & MV Cable Ducts |  | 20d | 2028-05-01 | 2028-05-29 | A4140 | 0d |  | Civil, 750 CFA Piling, Superstructure & Shell [160 h] | 4,000,000 |

| ID | WBS | Activity | Type | Duration | Start | Finish | Predecessors | Total float | Free float | Resources | Cost |
| --- | --- | --- | --- | --- | --- | --- | --- | --- | --- | --- | --- |
|  | 4.2-SUPER | **4.2 Structural Steel, Precast Frame & Roof Gantry** |  |  | 2028-05-29 | 2028-11-20 |  |  |  |  |  |
| A4210 |  | Erect Ground Floor HV Equipment Plinths & Concrete Cores (45MW Bay) |  | 35d | 2028-05-29 | 2028-07-17 | A4150 | 0d |  | Civil, 750 CFA Piling, Superstructure & Shell [280 h] | 8,500,000 |
| A4220 |  | Construct Level 1 Suspended Hollowcore / Composite Deck (18 kN/m2, Halls 1-5) |  | 30d | 2028-07-17 | 2028-08-28 | A4210 | 0d |  | Civil, 750 CFA Piling, Superstructure & Shell [240 h] | 6,500,000 |
| A4230 |  | Construct Level 2 Suspended Structural Deck (18 kN/m2, Halls 1-5) |  | 30d | 2028-08-28 | 2028-10-09 | A4220 | 0d |  | Civil, 750 CFA Piling, Superstructure & Shell [240 h] | 4,500,000 |
| A4240 |  | Erect Structural Steel Roof Frame & Acoustically Isolated Plant Gantry |  | 30d | 2028-10-09 | 2028-11-20 | A4230 | 0d |  | Civil, 750 CFA Piling, Superstructure & Shell [240 h] | 3,000,000 |
| A4250 |  | Form Fire-Rated Vertical Service Risers & Part B Shaft Cores |  | 20d | 2028-10-09 | 2028-11-06 | A4230 | 10d | 0d | Civil, 750 CFA Piling, Superstructure & Shell [160 h] | 1,500,000 |
|  | 4.3-ENVEL | **4.3 Cladding, Acoustic Louvres & BCAR Envelope** |  |  | 2028-11-20 | 2029-02-12 |  |  |  |  |  |
| A4310 |  | Install Insulated Precast Concrete Facade & Part L Thermal Panels (5-Hall Shell) |  | 40d | 2028-11-20 | 2029-01-15 | A4240, A4250 | 0d |  | Civil, 750 CFA Piling, Superstructure & Shell [320 h] | 6,500,000 |
| A4320 |  | Install Single-Ply Membrane Roof, Insulation & Fall Arrest Systems |  | 25d | 2028-11-20 | 2028-12-25 | A4240 | 10d | 0d | Civil, 750 CFA Piling, Superstructure & Shell [200 h] | 4,500,000 |
| A4330 |  | Execute 48-Hour Roof Flood Ponding & Airtightness Blower Test |  | 5d | 2028-12-25 | 2029-01-01 | A4320 | 10d | 0d | Civil, 750 CFA Piling, Superstructure & Shell [40 h] | 3,200,000 |
| A4340 |  | Install Acoustic Intake Louvres, Fire Dampers & Rated Penetration Seals |  | 20d | 2029-01-15 | 2029-02-12 | A4310, A4330 | 0d |  | Civil, 750 CFA Piling, Superstructure & Shell [160 h] | 4,300,000 |
| M4350 |  | Building Shell 100% Weather-Tight & BCAR Envelope Ready Milestone | milestone | 0d | 2029-02-12 | 2029-02-12 | A4340, A4410, A4420, A4440, A4450 | 0d |  | Civil, 750 CFA Piling, Superstructure & Shell [1 h] |  |
|  | 4.4-SITE | **4.4 Site Civil, SuDS, Fire Tanks & Perimeter** |  |  | 2027-10-18 | 2027-12-27 |  |  |  |  |  |
| A4410 |  | Construct Underground Fire Water Storage Tanks (2x 625m3) & Pump House |  | 40d | 2027-10-18 | 2027-12-13 | M1090 | 305d | 0d | Civil, 750 CFA Piling, Superstructure & Shell [320 h] | 3,200,000 |
| A4420 |  | Install SuDS Stormwater Attenuation & Class-1 Petrol Interceptor Drainage |  | 30d | 2027-10-18 | 2027-11-29 | M1090 | 315d | 0d | Civil, 750 CFA Piling, Superstructure & Shell [240 h] | 3,000,000 |
| A4430 |  | Install PAS 68 Anti-Ram Crash Barriers, Gatehouse & Vehicle Airlocks |  | 30d | 2027-10-18 | 2027-11-29 | M1090 | 295d | 0d | Civil, 750 CFA Piling, Superstructure & Shell [240 h] | 2,500,000 |
| A4450 |  | Construct Heavy-Duty Crane Hardstands & 63MVA Transformer Pads |  | 30d | 2027-10-18 | 2027-11-29 | M1090 | 315d | 0d | Civil, 750 CFA Piling, Superstructure & Shell [240 h] | 1,200,000 |
| A4440 |  | Install EN 50600-2-5 Perimeter PIDS Fence Sensors & CCTV Poles |  | 20d | 2027-11-29 | 2027-12-27 | A4430 | 295d | 0d | Civil, 750 CFA Piling, Superstructure & Shell [160 h] | 2,100,000 |
|  | 5.0-MEP | **5.0 HV Substation, BESS/HVO Gen, CHW/ERF & Fit-Out** |  |  | 2029-02-12 | 2029-09-24 |  |  |  |  |  |
|  | 5.1-ELEC | **5.1 110kV GIS Substation, EirGrid Interface & MV** |  |  | 2029-02-12 | 2029-06-25 |  |  |  |  |  |
| A5110 |  | Skate & Position Dual 63MVA Substation Transformers & Bund Oil Trap |  | 25d | 2029-02-12 | 2029-03-19 | M4350, M3120 | 0d |  | 110kV GIS Substation, White Space & Heat Reuse [200 h] | 5,500,000 |
| A5150 |  | Install Step-Down Cast Resin Distribution Transformers (22kV/400V) |  | 20d | 2029-02-12 | 2029-03-12 | M4350 | 20d | 0d | 110kV GIS Substation, White Space & Heat Reuse [160 h] | 2,000,000 |
| A5120 |  | Install 22kV SF6-Free GIS Switchgear Lineups A & B |  | 25d | 2029-03-19 | 2029-04-23 | A5110 | 0d |  | 110kV GIS Substation, White Space & Heat Reuse [200 h] | 7,500,000 |
| A5130 |  | Pull & Terminate 22kV LSZH Armoured Ring Feeders to Power Suites |  | 30d | 2029-04-23 | 2029-06-04 | A5120 | 0d |  | 110kV GIS Substation, White Space & Heat Reuse [240 h] | 6,200,000 |
| A5140 |  | HV Cable VLF Withstand, Partial Discharge & Protection Relay Calibration |  | 15d | 2029-06-04 | 2029-06-25 | A5130 | 0d |  | 110kV GIS Substation, White Space & Heat Reuse [120 h] | 4,800,000 |

| ID | WBS | Activity | Duration | Start | Finish | Predecessors | Total float | Free float | Resources | Cost |
| --- | --- | --- | --- | --- | --- | --- | --- | --- | --- | --- |
|  | 5.2-GEN | **5.2 HVO-Ready Gen Farm, SCR Abatement & BESS** |  | 2029-02-12 | 2029-05-07 |  |  |  |  |  |
| A5210 |  | Install Bunded HVO Biofuel Storage Tanks (4x 80m3) & Fuel Polishing | 30d | 2029-02-12 | 2029-03-26 | M4350 | 110d | 0d | 110kV GIS Substation, White Space & Heat Reuse [240 h] | 6,000,000 |
| A5220 |  | Position 20x 2.5MVA Standby Gensets on Acoustic Spring Isolators | 35d | 2029-02-12 | 2029-04-02 | M4350, M3120 | 100d | 0d | 110kV GIS Substation, White Space & Heat Reuse [280 h] | 4,800,000 |
| A5250 |  | Install On-Site Grid Support BESS Containers & MV Paralleling Switchgear | 25d | 2029-02-12 | 2029-03-19 | M4350 | 135d | 0d | 110kV GIS Substation, White Space & Heat Reuse [200 h] | 2,500,000 |
| A5240 |  | Connect Redundant Stainless HVO Fuel Loops & Day Tanks | 20d | 2029-03-26 | 2029-04-23 | A5210 | 110d | 0d | 110kV GIS Substation, White Space & Heat Reuse [160 h] | 4,500,000 |
| A5230 |  | Erect SCR Catalytic Exhaust Flues (EPA IEL Height) & Acoustic Pods | 25d | 2029-04-02 | 2029-05-07 | A5220 | 100d | 0d | 110kV GIS Substation, White Space & Heat Reuse [200 h] | 4,200,000 |
|  | 5.3-MECH | **5.3 Low-GWP CHW Plant, Heat Reuse (ERF) & TES** |  | 2029-02-12 | 2029-08-13 |  |  |  |  |  |
| A5310 |  | Rig & Position 8x 1200 RT Low-GWP Chillers on Vibration Isolators | 25d | 2029-02-12 | 2029-03-19 | M4350, M3120 | 30d | 0d | 110kV GIS Substation, White Space & Heat Reuse [200 h] | 7,000,000 |
| A5320 |  | Hoist & Anchor Closed-Circuit Free-Cooling Towers on Roof Gantry | 25d | 2029-02-12 | 2029-03-19 | M4350 | 30d | 0d | 110kV GIS Substation, White Space & Heat Reuse [200 h] | 5,500,000 |
| A5370 |  | Erect Stratified Thermal Energy Storage (TES) Buffer Tanks & Manifolds | 30d | 2029-02-12 | 2029-03-26 | M4350 | 115d | 0d | 110kV GIS Substation, White Space & Heat Reuse [240 h] | 1,800,000 |
| A5380 |  | Install Rainwater Harvesting & Reverse Osmosis (RO) Water Treatment (WUE) | 20d | 2029-02-12 | 2029-03-12 | M4350 | 140d | 0d | 110kV GIS Substation, White Space & Heat Reuse [160 h] | 1,200,000 |
| A5330 |  | Weld & NDT Inspect DN400/500 CHW, Condenser & District Heat-Reuse Pipe | 45d | 2029-03-19 | 2029-05-21 | A5310, A5320 | 30d | 0d | 110kV GIS Substation, White Space & Heat Reuse [360 h] | 4,500,000 |
| A5390 |  | Connect District Heating Export Valve Skid (EU EED ERF Readiness) | 15d | 2029-03-26 | 2029-04-16 | A5370 | 115d | 0d | 110kV GIS Substation, White Space & Heat Reuse [120 h] | 1,000,000 |
| A5340 |  | Mount Variable Speed Primary/Secondary Pumps & Plate Heat Exchangers | 20d | 2029-05-21 | 2029-06-18 | A5330 | 30d | 0d | 110kV GIS Substation, White Space & Heat Reuse [160 h] | 2,800,000 |
| A5350 |  | Perform 1.5x PN16 Hydrostatic Test, BSRIA Chemical Flush & Passivate | 15d | 2029-06-18 | 2029-07-09 | A5340 | 30d | 0d | 110kV GIS Substation, White Space & Heat Reuse [120 h] | 2,500,000 |
| A5360 |  | Apply Vapour-Sealed Pipe Insulation, Cladding & Heat Tracing | 25d | 2029-07-09 | 2029-08-13 | A5350 | 30d | 0d | 110kV GIS Substation, White Space & Heat Reuse [200 h] | 2,200,000 |
|  | 5.4-WS | **5.4 Data Halls 1-5 White Space & Power Suites** |  | 2029-02-12 | 2029-08-27 |  |  |  |  |  |
| A5430 |  | Data Hall 1 (9MW): Erect 800mm Pedestal Floor & Overhead Busways | 35d | 2029-02-12 | 2029-04-02 | M4350 | 45d | 0d | 110kV GIS Substation, White Space & Heat Reuse [280 h] | 2,800,000 |
| A5440 |  | Data Hall 2 (9MW): Erect 800mm Pedestal Floor & Overhead Busways | 35d | 2029-02-12 | 2029-04-02 | M4350 | 45d | 0d | 110kV GIS Substation, White Space & Heat Reuse [280 h] | 2,800,000 |
| A5450 |  | Data Hall 3 (9MW): Erect 800mm Pedestal Floor & Overhead Busways | 35d | 2029-02-12 | 2029-04-02 | M4350 | 45d | 0d | 110kV GIS Substation, White Space & Heat Reuse [280 h] | 2,800,000 |
| A5460 |  | Data Hall 4 (9MW): Erect 800mm Pedestal Floor & Overhead Busways | 35d | 2029-02-12 | 2029-04-02 | M4350 | 45d | 0d | 110kV GIS Substation, White Space & Heat Reuse [280 h] | 2,800,000 |
| A5468 |  | Data Hall 5 (9MW): Erect 800mm Pedestal Floor & Overhead Busways | 35d | 2029-02-12 | 2029-04-02 | M4350 | 45d | 0d | 110kV GIS Substation, White Space & Heat Reuse [280 h] | 2,800,000 |
| A5405 |  | Install Main LV Switchboards (MSB-A/B) & Static Transfer Switches (STS) | 25d | 2029-03-12 | 2029-04-16 | A5150, M4350, M3120 | 20d | 0d | 110kV GIS Substation, White Space & Heat Reuse [200 h] | 4,500,000 |
| A5435 |  | Data Hall 1 (9MW): Install 18x EC-Fan CRAHs & Hot Aisle Containment | 25d | 2029-04-02 | 2029-05-07 | A5430 | 45d | 0d | 110kV GIS Substation, White Space & Heat Reuse [200 h] | 3,200,000 |
| A5445 |  | Data Hall 2 (9MW): Install 18x EC-Fan CRAHs & Hot Aisle Containment | 25d | 2029-04-02 | 2029-05-07 | A5440 | 45d | 0d | 110kV GIS Substation, White Space & Heat Reuse [200 h] | 3,200,000 |
| A5455 |  | Data Hall 3 (9MW): Install 18x EC-Fan CRAHs & Hot Aisle Containment | 25d | 2029-04-02 | 2029-05-07 | A5450 | 45d | 0d | 110kV GIS Substation, White Space & Heat Reuse [200 h] | 3,200,000 |
| A5465 |  | Data Hall 4 (9MW): Install 18x EC-Fan CRAHs & Hot Aisle Containment | 25d | 2029-04-02 | 2029-05-07 | A5460 | 45d | 0d | 110kV GIS Substation, White Space & Heat Reuse [200 h] | 3,200,000 |
| A5469 |  | Data Hall 5 (9MW): Install 18x EC-Fan CRAHs & Hot Aisle Containment | 25d | 2029-04-02 | 2029-05-07 | A5468 | 45d | 0d | 110kV GIS Substation, White Space & Heat Reuse [200 h] | 3,200,000 |
| A5410 |  | Position & Terminate 45x 1000kVA Static Modular UPS Units | 35d | 2029-04-16 | 2029-06-04 | A5405 | 55d | 0d | 110kV GIS Substation, White Space & Heat Reuse [280 h] | 5,200,000 |
| A5415 |  | Install Floor-Standing Power Distribution Units (PDUs) & RPPs | 25d | 2029-04-16 | 2029-05-21 | A5405 | 20d | 0d | 110kV GIS Substation, White Space & Heat Reuse [200 h] | 3,800,000 |
| A5482 |  | Complete Hall 1 Clean-Room Epoxy Sealing & Architectural Finishes | 15d | 2029-05-07 | 2029-05-28 | A5435 | 45d | 0d | 110kV GIS Substation, White Space & Heat Reuse [120 h] | 1,000,000 |
| A5484 |  | Complete Hall 2 Clean-Room Epoxy Sealing & Architectural Finishes | 15d | 2029-05-07 | 2029-05-28 | A5445 | 45d | 0d | 110kV GIS Substation, White Space & Heat Reuse [120 h] | 1,000,000 |
| A5486 |  | Complete Hall 3 Clean-Room Epoxy Sealing & Architectural Finishes | 15d | 2029-05-07 | 2029-05-28 | A5455 | 45d | 0d | 110kV GIS Substation, White Space & Heat Reuse [120 h] | 1,000,000 |
| A5488 |  | Complete Hall 4 Clean-Room Epoxy Sealing & Architectural Finishes | 15d | 2029-05-07 | 2029-05-28 | A5465 | 45d | 0d | 110kV GIS Substation, White Space & Heat Reuse [120 h] | 1,000,000 |
| A5489 |  | Complete Hall 5 Clean-Room Epoxy Sealing & Architectural Finishes | 15d | 2029-05-07 | 2029-05-28 | A5469 | 45d | 0d | 110kV GIS Substation, White Space & Heat Reuse [120 h] | 1,000,000 |
| A5470 |  | Pull Vertical Busbar Risers & Main 400V Feeder Trunking | 25d | 2029-05-21 | 2029-06-25 | A5415 | 20d | 0d | 110kV GIS Substation, White Space & Heat Reuse [200 h] | 2,500,000 |
| A5490 |  | Install LED Lighting, Emergency Lighting & Part B Fire Seals | 20d | 2029-05-28 | 2029-06-25 | A5482, A5484, A5486, A5488, A5489 | 45d | 0d | 110kV GIS Substation, White Space & Heat Reuse [160 h] | 2,000,000 |
| A5420 |  | Install LFP Battery Racks, Off-Gas Detectors & Thermal Extraction Fans | 25d | 2029-06-04 | 2029-07-09 | A5410 | 55d | 0d | 110kV GIS Substation, White Space & Heat Reuse [200 h] | 3,500,000 |
| A5475 |  | Install Equipotential Bonding Grid & Overhead Fibre Basket Tray | 20d | 2029-06-25 | 2029-07-23 | A5470 | 20d | 0d | 110kV GIS Substation, White Space & Heat Reuse [160 h] | 1,600,000 |
| A5495 |  | Complete Corridor Airlocks, Mantrap Vestibules & Internal Doors | 20d | 2029-06-25 | 2029-07-23 | A5490 | 45d | 0d | 110kV GIS Substation, White Space & Heat Reuse [160 h] | 1,800,000 |
| A5480 |  | Fit Out Dual Diverse Meet-Me-Rooms (MMR-A/B) & ODF Patch Panels | 25d | 2029-07-23 | 2029-08-27 | A5475 | 20d | 0d | 110kV GIS Substation, White Space & Heat Reuse [200 h] | 2,100,000 |

| ID | WBS | Activity | Type | Duration | Start | Finish | Predecessors | Total float | Free float | Resources | Cost |
| --- | --- | --- | --- | --- | --- | --- | --- | --- | --- | --- | --- |
|  | 5.5-ICT | **5.5 EPMS, BMS, EED Telemetry, Life Safety & SOC** |  |  | 2029-02-12 | 2029-09-24 |  |  |  |  |  |
| A5510 |  | Install BACnet/IP BMS DDC Controllers, Actuators & Temp Sensors |  | 30d | 2029-02-12 | 2029-03-26 | M4350 | 90d | 0d | 110kV GIS Substation, White Space & Heat Reuse [240 h] | 2,200,000 |
| A5530 |  | Install VESDA-E Aspirating Smoke Detection Sampling Pipework |  | 25d | 2029-02-12 | 2029-03-19 | M4350 | 100d | 0d | 110kV GIS Substation, White Space & Heat Reuse [200 h] | 1,200,000 |
| A5540 |  | Install High-Pressure Water-Mist / Clean Agent Fire Suppression |  | 25d | 2029-02-12 | 2029-03-19 | M4350 | 100d | 0d | 110kV GIS Substation, White Space & Heat Reuse [200 h] | 1,500,000 |
| A5550 |  | Install Double-Interlock Pre-Action Sprinkler Zones & Alarm Valves |  | 30d | 2029-02-12 | 2029-03-26 | M4350 | 95d | 0d | 110kV GIS Substation, White Space & Heat Reuse [240 h] | 1,400,000 |
| A5570 |  | Connect Addressable Cause-and-Effect Fire Panels & Gas Interlocks |  | 15d | 2029-03-26 | 2029-04-16 | A5530, A5540, A5550 | 95d | 0d | 110kV GIS Substation, White Space & Heat Reuse [120 h] | 700,000 |
| A5580 |  | Install Post-Discharge Smoke Extract & Corridor Pressurisation Fans |  | 20d | 2029-04-16 | 2029-05-14 | A5570 | 95d | 0d | 110kV GIS Substation, White Space & Heat Reuse [160 h] | 500,000 |
| A5520 |  | Deploy EPMS Smart Meters & EU EED PUE/WUE/ERF Automated Feeds |  | 25d | 2029-06-25 | 2029-07-30 | A5140, A5415 | 0d |  | 110kV GIS Substation, White Space & Heat Reuse [200 h] | 2,500,000 |
| A5560 |  | Terminate Structured Cabling & BMS/EPMS Fibre Ring Backbone |  | 20d | 2029-07-30 | 2029-08-27 | A5510, A5520 | 0d |  | 110kV GIS Substation, White Space & Heat Reuse [160 h] | 1,100,000 |
| A5590 |  | Commission EN 50600 Security Operations Centre (SOC) & Biometrics |  | 20d | 2029-08-27 | 2029-09-24 | A5560 | 0d |  | 110kV GIS Substation, White Space & Heat Reuse [160 h] | 900,000 |
| M5595 |  | MEP Infrastructure & White Space Fit-Out Complete Milestone | milestone | 0d | 2029-09-24 | 2029-09-24 | A5140, A5230, A5240, A5250, A5380, A5360, A5390, A5420, A5480, A5495, A5580, A5590 | 0d |  | 110kV GIS Substation, White Space & Heat Reuse [1 h] |  |
|  | 6.0-CX | **6.0 CIBSE / ASHRAE Commissioning (L1-L5) & Safety File** |  |  | 2028-01-03 | 2030-02-25 |  |  |  |  |  |
|  | 6.1-L12 | **6.1 Cx Levels 1 & 2: Witnessed FAT & BCAR Site QA** |  |  | 2028-01-03 | 2028-03-13 |  |  |  |  |  |
| A6110 |  | Cx Level 1: Witnessed EU Factory Acceptance Reports (Switchgear/UPS/BESS) |  | 20d | 2028-01-03 | 2028-01-31 | M3120 | 400d | 0d | CIBSE/ASHRAE Commissioning & 45MW IST Load Banks [160 h] | 600,000 |
| A6120 |  | Cx Level 2: BCAR Field Delivery Inspection & Shock-Logger Verification |  | 15d | 2028-01-31 | 2028-02-21 | A6110 | 400d | 0d | CIBSE/ASHRAE Commissioning & 45MW IST Load Banks [120 h] | 700,000 |
| A6130 |  | Cx Level 2: Assigned Certifier Installation Checklist & Tag Sign-Off |  | 15d | 2028-02-21 | 2028-03-13 | A6120 | 400d | 0d | CIBSE/ASHRAE Commissioning & 45MW IST Load Banks [120 h] | 500,000 |
|  | 6.2-L3 | **6.2 Cx Level 3: Pre-Functional Static & LOTO Ready** |  |  | 2029-09-24 | 2029-10-15 |  |  |  |  |  |
| A6210 |  | Cx L3: Static HV/MV Insulation Resistance (Megger) & Continuity Test |  | 15d | 2029-09-24 | 2029-10-15 | A6130, M5595 | 0d |  | CIBSE/ASHRAE Commissioning & 45MW IST Load Banks [120 h] | 900,000 |
| A6220 |  | Cx L3: Protection Relay Secondary Injection & Interlock Matrix Check |  | 15d | 2029-09-24 | 2029-10-15 | M5595 | 0d |  | CIBSE/ASHRAE Commissioning & 45MW IST Load Banks [120 h] | 1,200,000 |
| A6230 |  | Cx L3: Piping Flushing Validation & Nitrogen Pressure Hold Checks |  | 15d | 2029-09-24 | 2029-10-15 | M5595 | 0d |  | CIBSE/ASHRAE Commissioning & 45MW IST Load Banks [120 h] | 800,000 |
| A6240 |  | Cx L3: BMS/EPMS & EU EED Point-to-Point End-to-End Loop Checkout |  | 15d | 2029-09-24 | 2029-10-15 | M5595 | 0d |  | CIBSE/ASHRAE Commissioning & 45MW IST Load Banks [120 h] | 700,000 |
| A6250 |  | Cx L3: VESDA Aerosol Smoke Transit Time & Fan Damper Trip Test |  | 10d | 2029-09-24 | 2029-10-08 | M5595 | 5d | 0d | CIBSE/ASHRAE Commissioning & 45MW IST Load Banks [80 h] | 600,000 |
| M6260 |  | Cx Level 3 Pre-Functional Static & LOTO Ready Milestone | milestone | 0d | 2029-10-15 | 2029-10-15 | A6210, A6220, A6230, A6240, A6250 | 0d |  | CIBSE/ASHRAE Commissioning & 45MW IST Load Banks [1 h] |  |
|  | 6.3-L4 | **6.3 Cx Level 4: Functional Dynamic & BESS Response** |  |  | 2029-10-08 | 2029-12-10 |  |  |  |  |  |
| A6360 |  | Cx L4: Dry Pre-Action Sprinkler & Part B Smoke Cause-and-Effect Test |  | 10d | 2029-10-08 | 2029-10-22 | A6250 | 35d | 0d | CIBSE/ASHRAE Commissioning & 45MW IST Load Banks [80 h] | 600,000 |
| A6310 |  | Cx L4: First 22kV Live Energisation under HV LOTO Safety Rules |  | 10d | 2029-10-15 | 2029-10-29 | M6260 | 0d |  | CIBSE/ASHRAE Commissioning & 45MW IST Load Banks [80 h] | 1,000,000 |
| A6320 |  | Cx L4: 20x HVO Genset Step-Load, SCR NOx & Black-Start Verification |  | 25d | 2029-10-29 | 2029-12-03 | A6310 | 5d | 0d | CIBSE/ASHRAE Commissioning & 45MW IST Load Banks [200 h] | 1,000,000 |
| A6330 |  | Cx L4: UPS Bank Battery Autonomy Discharge & BESS Grid Response Test |  | 15d | 2029-10-29 | 2029-11-19 | A6310 | 15d | 0d | CIBSE/ASHRAE Commissioning & 45MW IST Load Banks [120 h] | 800,000 |
| A6340 |  | Cx L4: Free-Cooling Chiller Staging, Pump VFD & Heat-Reuse Valve Test |  | 15d | 2029-10-29 | 2029-11-19 | A6310 | 0d |  | CIBSE/ASHRAE Commissioning & 45MW IST Load Banks [120 h] | 1,000,000 |
| A6350 |  | Cx L4: CIBSE Code M Air Balancing & CRAH Underfloor Pressure Test |  | 15d | 2029-11-19 | 2029-12-10 | A6340 | 0d |  | CIBSE/ASHRAE Commissioning & 45MW IST Load Banks [120 h] | 800,000 |
| M6370 |  | Cx Level 4 Functional Dynamic Performance Passed Milestone | milestone | 0d | 2029-12-10 | 2029-12-10 | A6320, A6330, A6350, A6360 | 0d |  | CIBSE/ASHRAE Commissioning & 45MW IST Load Banks [1 h] |  |

| ID | WBS | Activity | Type | Duration | Start | Finish | Predecessors | Total float | Free float | Resources | Cost |
| --- | --- | --- | --- | --- | --- | --- | --- | --- | --- | --- | --- |
|  | 6.4-L5 | **6.4 Cx Level 5: 45MW Integrated Systems Testing (IST)** |  |  | 2029-12-10 | 2030-02-25 |  |  |  |  |  |
| A6410 |  | Cx L5: Mobilise & Terminate 45MW Portable Resistive-Reactive Load Banks |  | 12d | 2029-12-10 | 2029-12-26 | M6370 | 0d |  | CIBSE/ASHRAE Commissioning & 45MW IST Load Banks [96 h] | 1,200,000 |
| A6420 |  | Cx L5: Perform Continuous 48-Hour 45MW Full-Load Thermal Heat Soak |  | 12d | 2029-12-26 | 2030-01-11 | A6410 | 0d |  | CIBSE/ASHRAE Commissioning & 45MW IST Load Banks [96 h] | 1,500,000 |
| A6430 |  | Cx L5 Scenario 1: Total Grid Loss (<10s ATS to HVO Genset & BESS Ride) |  | 8d | 2030-01-11 | 2030-01-23 | A6420 | 0d |  | CIBSE/ASHRAE Commissioning & 45MW IST Load Banks [64 h] | 2,000,000 |
| A6440 |  | Cx L5 Scenario 2: EN 50600 Class 3 / Tier III Concurrent Maintenance Test |  | 8d | 2030-01-23 | 2030-02-04 | A6430 | 0d |  | CIBSE/ASHRAE Commissioning & 45MW IST Load Banks [64 h] | 1,500,000 |
| A6450 |  | Cx L5 Scenario 3: Chiller Failure, TES Ride-Through & ERF Heat Dump |  | 7d | 2030-02-04 | 2030-02-13 | A6440 | 0d |  | CIBSE/ASHRAE Commissioning & 45MW IST Load Banks [56 h] | 900,000 |
| A6460 |  | Cx L5: Demobilise 45MW Load Banks & Clean-Room ISO Class Decontamination |  | 8d | 2030-02-13 | 2030-02-25 | A6450 | 0d |  | CIBSE/ASHRAE Commissioning & 45MW IST Load Banks [64 h] | 700,000 |
| M6470 |  | Cx Level 5 Integrated Systems Testing (45MW IST) Passed Milestone | milestone | 0d | 2030-02-25 | 2030-02-25 | A6460, A6530 | 0d |  | CIBSE/ASHRAE Commissioning & 45MW IST Load Banks [1 h] |  |
|  | 6.5-OPS | **6.5 Operational Readiness, HSA Safety File & Drills** |  |  | 2028-01-03 | 2029-12-17 |  |  |  |  |  |
| A6540 |  | Hand Over 2-Year Critical Spares Inventory & OEM Warranty Certificates |  | 15d | 2028-01-03 | 2028-01-24 | M3120 | 590d | 0d | CIBSE/ASHRAE Commissioning & 45MW IST Load Banks [120 h] | 100,000 |
| A6510 |  | Verify DCIM Live Telemetry & EU EED (2024/1364) Database Export |  | 20d | 2029-09-24 | 2029-10-22 | M5595 | 75d | 0d | CIBSE/ASHRAE Commissioning & 45MW IST Load Banks [160 h] | 200,000 |
| A6520 |  | Compile SOP, EOP, MOP Library & Statutory PSDP/PSCS Health Safety File |  | 30d | 2029-10-15 | 2029-11-26 | M6260 | 50d | 0d | CIBSE/ASHRAE Commissioning & 45MW IST Load Banks [240 h] | 150,000 |
| A6530 |  | Conduct Facility Operations Black-Hat Failure Simulation Drills |  | 15d | 2029-11-26 | 2029-12-17 | A6510, A6520 | 50d | 0d | CIBSE/ASHRAE Commissioning & 45MW IST Load Banks [120 h] | 150,000 |
|  | 7.0-COD | **7.0 BCAR Certificate, EirGrid Live Sync & Handover** |  |  | 2030-02-25 | 2030-05-20 |  |  |  |  |  |
| A7010 |  | Local Authority Fire Officer Inspection & Part B Final Clearance |  | 15d | 2030-02-25 | 2030-03-18 | M6470 | 0d |  | Statutory Handover, BCAR CCC & EirGrid Sync [120 h] | 450,000 |
| A7020 |  | EU EED (2023/1791) Reporting Submission & GDPR / NIS2 Cyber Readiness |  | 15d | 2030-02-25 | 2030-03-18 | M6470 | 30d | 0d | Statutory Handover, BCAR CCC & EirGrid Sync [120 h] | 1,200,000 |
| A7030 |  | EirGrid / ESB Networks 110kV Grid-Code Sign-Off & Commercial Sync |  | 15d | 2030-03-18 | 2030-04-08 | A7010, A1070 | 0d |  | Statutory Handover, BCAR CCC & EirGrid Sync [120 h] | 1,500,000 |
| A7040 |  | EN 50600 Class 3 & Uptime Institute Tier III Constructed Facility Audit |  | 15d | 2030-04-08 | 2030-04-29 | A7030 | 0d |  | Statutory Handover, BCAR CCC & EirGrid Sync [120 h] | 1,350,000 |
| A7050 |  | BCAR Certificate of Compliance on Completion (Assigned Certifier / BCMS) |  | 15d | 2030-04-29 | 2030-05-20 | A6540, A7010, A7020, A7040 | 0d |  | Statutory Handover, BCAR CCC & EirGrid Sync [120 h] | 500,000 |
| M7060 |  | Commercial Operation Date (COD), Handover & Safety File Milestone | milestone | 0d | 2030-05-20 | 2030-05-20 | A7050 | 0d |  | Statutory Handover, BCAR CCC & EirGrid Sync [1 h] |  |
