# Vietnam Hyperscale Data Center 45MW (TIA-942 Rated 3)

Schedule from Primavera P6, 2027-01-04 to 2030-05-20, data date 2027-01-04, costs in USD.
Must finish by 2030-05-20

## Resources

| Resource | Group |
| --- | --- |
| Statutory Permitting, Cadastral Land Option & EVN Deposit | material |
| Lead Architect, Feasibility Study & Detailed Engineering Design | labor |
| Major OFCI Critical Plant & Sea Freight Customs Clearance | material |
| Civil Enabling, 750 Bored Piles, Structural Frame & Envelope |  |
| 110kV GIS Substation, White Space Electrical & Mechanical Fitout |  |
| Commissioning Authority, 45MW IST Load Banks & Testing Fuel | labor |
| Statutory Fire PC07 Certification, DOC Acceptance & EVN Sync | labor |

## Schedule

| ID | WBS | Activity | Type | Duration | Start | Finish | Predecessors | Total float | Free float | Resources | Cost |
| --- | --- | --- | --- | --- | --- | --- | --- | --- | --- | --- | --- |
|  | 1.0-PERM | **1.0 Investment Approval (IPA), 1/500 DMP, EIA (MONRE) & EVN 110kV Grid Agreement** |  |  | 2027-01-04 | 2027-10-18 |  |  |  |  |  |
| A1010 |  | Appoint Statutory Project Management Consultant & Permitting Advisory Team (Decree 15/2021) |  | 15d | 2027-01-04 | 2027-01-25 | M1000 | 15d | 0d | Statutory Permitting, Cadastral Land Option & EVN Deposit [120] | 350,000 |
| A1020 |  | Industrial Park Sublease Agreement, Cadastral Boundary Survey & Land Deposit |  | 30d | 2027-01-04 | 2027-02-15 | M1000 | 0d |  | Statutory Permitting, Cadastral Land Option & EVN Deposit [240] | 4,200,000 |
| A1060 |  | Authority RFI Review, Inter-Ministerial Appraisal & Statutory Technical Clarification |  | 80d | 2027-01-04 | 2027-04-26 | M1000 | 70d | 0d | Statutory Permitting, Cadastral Land Option & EVN Deposit [640] | 150,000 |
| M1000 |  | Project Kickoff & Statutory Permitting Commencement | milestone | 0d | 2027-01-04 | 2027-01-04 |  | 0d |  | Statutory Permitting, Cadastral Land Option & EVN Deposit [1] |  |
| A1030 |  | Consult Provincial People Committee (PPC) & Industrial Zone Authority on 1/500 DMP |  | 50d | 2027-02-15 | 2027-04-26 | A1010, A1020 | 0d |  | Statutory Permitting, Cadastral Land Option & EVN Deposit [400] | 750,000 |
| A1040 |  | Formulate & Submit Environmental Impact Assessment (EIA) to MONRE (Law on Environment 2020) |  | 75d | 2027-04-26 | 2027-08-09 | A1030 | 0d |  | Statutory Permitting, Cadastral Land Option & EVN Deposit [600] | 1,150,000 |
| A1050 |  | Formal Application for In-Principle Investment Approval (IPA) & Investment Certificate (IRC) |  | 85d | 2027-04-26 | 2027-08-23 | A1030 | 25d | 0d | Statutory Permitting, Cadastral Land Option & EVN Deposit [680] | 250,000 |
| A1070 |  | Receive Formal In-Principle Investment Approval (IPA) & Approved 1/500 Master Plan |  | 40d | 2027-04-26 | 2027-06-21 | A1060, A2050 | 70d | 0d | Statutory Permitting, Cadastral Land Option & EVN Deposit [320] | 100,000 |
| A1080 |  | Execute EVN 110kV Grid Connection Agreement, System Impact Study & PPA Contract |  | 35d | 2027-08-09 | 2027-09-27 | A1040, A2040, A2100 | 0d |  | Statutory Permitting, Cadastral Land Option & EVN Deposit [280] | 4,850,000 |
| A1085 |  | Environmental Permit (EP) Application & Air Emissions / Wastewater Compliance Audit (MONRE) |  | 15d | 2027-09-27 | 2027-10-18 | A1050, A1080, A1070 | 0d |  | Statutory Permitting, Cadastral Land Option & EVN Deposit [120] | 200,000 |
| M1090 |  | All Vietnamese Statutory Investment, Environmental & Grid Approvals Granted Gate | milestone | 0d | 2027-10-18 | 2027-10-18 | A1085 | 0d |  | Statutory Permitting, Cadastral Land Option & EVN Deposit [1] |  |
|  | 2.0-ENG | **2.0 Feasibility Study (Decree 15), Fire Safety Appraisal (PC07) & Building Permit** |  |  | 2027-01-04 | 2027-07-12 |  |  |  |  |  |
| A2010 |  | ISO 19650 BIM Execution Plan (BEP) & Common Data Environment (CDE) Setup |  | 15d | 2027-01-04 | 2027-01-25 | M1000 | 35d | 0d | Lead Architect, Feasibility Study & Detailed Engineering Design [120 h] | 350,000 |
| A2020 |  | Feasibility Study (FS) Preparation & Basis of Design (BOD) under Decree 15/2021/ND-CP |  | 25d | 2027-01-04 | 2027-02-08 | M1000 | 25d | 0d | Lead Architect, Feasibility Study & Detailed Engineering Design [200 h] | 1,650,000 |
| A2050 |  | Mechanical Cooling Plant & Water-Cooled Chiller Plant Design (TCVN 9250 / TIA-942) |  | 40d | 2027-01-25 | 2027-03-22 | A2010 | 95d | 0d | Lead Architect, Feasibility Study & Detailed Engineering Design [320 h] | 2,300,000 |
| A2070 |  | Fire Prevention and Fighting Police Department (PC07) Design Appraisal under QCVN 06:2022 |  | 40d | 2027-01-25 | 2027-03-22 | A2010 | 305d | 0d | Lead Architect, Feasibility Study & Detailed Engineering Design [320 h] | 800,000 |
| A2030 |  | Civil & Structural Engineering Foundation Design (750 Bored Piles to Bedrock) |  | 35d | 2027-02-08 | 2027-03-29 | A2010, A2020 | 25d | 0d | Lead Architect, Feasibility Study & Detailed Engineering Design [280 h] | 2,000,000 |
| A2060 |  | ANSI/TIA-942-B Rated 3 & Uptime Tier III Concurrent Maintainability Engineering |  | 45d | 2027-03-22 | 2027-05-24 | A2050 | 290d | 0d | Lead Architect, Feasibility Study & Detailed Engineering Design [360 h] | 600,000 |
| A2080 |  | Department of Construction (DOC) Basic Design Technical Appraisal under Decree 15/2021 |  | 30d | 2027-03-22 | 2027-05-03 | A2070 | 305d | 0d | Lead Architect, Feasibility Study & Detailed Engineering Design [240 h] | 300,000 |
| A2040 |  | Detailed 3D MEP Design: 110kV/22kV Substation, 2N UPS & Tropical Cooling Infrastructure |  | 40d | 2027-03-29 | 2027-05-24 | A2030 | 25d | 0d | Lead Architect, Feasibility Study & Detailed Engineering Design [320 h] | 4,100,000 |
| A2090 |  | Environmental Acoustic Attenuation, Silencers & Generator Emission Scrubber Engineering |  | 35d | 2027-05-24 | 2027-07-12 | A2060, A2080 | 290d | 0d | Lead Architect, Feasibility Study & Detailed Engineering Design [280 h] | 650,000 |
| A2100 |  | Multi-Disciplinary Navisworks Clash Freeze & Issue for Construction (IFC) Drawing Package |  | 30d | 2027-05-24 | 2027-07-05 | A2040 | 25d | 0d | Lead Architect, Feasibility Study & Detailed Engineering Design [240 h] | 750,000 |
| M2110 |  | Formal Statutory Building Permit (BP) Issued by Department of Construction (DOC) | milestone | 0d | 2027-07-12 | 2027-07-12 | A2030, A2040, A2050, A2060, A2070, A2080, A2090, A2100 | 290d | 0d | Lead Architect, Feasibility Study & Detailed Engineering Design [1 h] |  |

| ID | WBS | Activity | Type | Duration | Start | Finish | Predecessors | Total float | Free float | Resources | Cost |
| --- | --- | --- | --- | --- | --- | --- | --- | --- | --- | --- | --- |
|  | 3.0-PROC | **3.0 Major OFCI Equipment Procurement, Sea Freight Customs Clearance & FAT** |  |  | 2027-07-12 | 2028-01-03 |  |  |  |  |  |
| A3010 |  | Manufacture & FAT 110kV/22kV Substation Transformers (2x 63MVA Low-Loss) |  | 95d | 2027-07-12 | 2027-11-22 | M2110 | 305d | 0d | Major OFCI Critical Plant & Sea Freight Customs Clearance [760] | 16,000,000 |
| A3020 |  | Manufacture & FAT Standby Generators (20x 2.5MVA HVO-Ready with SCR Emission Systems) |  | 95d | 2027-07-12 | 2027-11-22 | M2110 | 320d | 0d | Major OFCI Critical Plant & Sea Freight Customs Clearance [760] | 20,500,000 |
| A3030 |  | Manufacture & FAT High-Efficiency Water-Cooled Chillers & Cooling Towers (Tropical Monsoon) |  | 110d | 2027-07-12 | 2027-12-13 | M2110 | 290d | 0d | Major OFCI Critical Plant & Sea Freight Customs Clearance [880] | 15,000,000 |
| A3040 |  | Manufacture & FAT 10x 1,500kVA High-Efficiency Modular 2N UPS Suites |  | 80d | 2027-07-12 | 2027-11-01 | M2110 | 335d | 0d | Major OFCI Critical Plant & Sea Freight Customs Clearance [640] | 10,500,000 |
| A3045 |  | Manufacture & FAT 22kV Primary Medium Voltage (MV) Switchgear & Protection Relays |  | 80d | 2027-07-12 | 2027-11-01 | M2110 | 335d | 0d | Major OFCI Critical Plant & Sea Freight Customs Clearance [640] | 6,500,000 |
| A3050 |  | Manufacture & FAT 415V Low Voltage Main Distribution Boards (MDBs) & Auto-Transfer Switches |  | 95d | 2027-07-12 | 2027-11-22 | M2110 | 305d | 0d | Major OFCI Critical Plant & Sea Freight Customs Clearance [760] | 5,200,000 |
| A3060 |  | Procure & Deliver 4000A / 2500A Overhead Copper Busway Trunking & Tap-Off Boxes |  | 70d | 2027-07-12 | 2027-10-18 | M2110 | 345d | 0d | Major OFCI Critical Plant & Sea Freight Customs Clearance [560] | 2,800,000 |
| A3070 |  | Procure Seismic Restraints, Spring Vibration Isolators & Heavy Plant Rigging Gear |  | 105d | 2027-07-12 | 2027-12-06 | M2110 | 295d | 0d | Major OFCI Critical Plant & Sea Freight Customs Clearance [840] | 1,000,000 |
| A3080 |  | Procure Thermal Energy Storage (TES) Buffer Tanks & Primary Chilled Water Header Skids |  | 80d | 2027-07-12 | 2027-11-01 | M2110 | 335d | 0d | Major OFCI Critical Plant & Sea Freight Customs Clearance [640] | 1,600,000 |
| A3090 |  | Procure Plate Heat Exchangers, Secondary Balancing Valves & Variable Frequency Drives |  | 60d | 2027-07-12 | 2027-10-04 | M2110 | 355d | 0d | Major OFCI Critical Plant & Sea Freight Customs Clearance [480] | 1,300,000 |
| A3100 |  | Procure Server Rack Cabinets, Intelligent Rack PDUs & Structured Cabling Assemblies |  | 50d | 2027-07-12 | 2027-09-20 | M2110 | 365d | 0d | Major OFCI Critical Plant & Sea Freight Customs Clearance [400] | 1,400,000 |
| A3015 |  | Manufacture & FAT SF6-Free 110kV Gas Insulated Switchgear (GIS) |  | 15d | 2027-11-22 | 2027-12-13 | A3010 | 305d | 0d | Major OFCI Critical Plant & Sea Freight Customs Clearance [120] | 12,000,000 |
| A3055 |  | Manufacture & FAT High-Density In-Row CRAH Units & Hot Aisle Containment Systems |  | 15d | 2027-11-22 | 2027-12-13 | A3050 | 305d | 0d | Major OFCI Critical Plant & Sea Freight Customs Clearance [120] | 3,800,000 |
| A3075 |  | Procure Bulk Fuel Storage Tanks (HVO 72-Hour Reserve) & Duplex Fuel Transfer Skids |  | 15d | 2027-12-06 | 2027-12-27 | A3070 | 295d | 0d | Major OFCI Critical Plant & Sea Freight Customs Clearance [120] | 1,400,000 |
| A3035 |  | Manufacture & FAT 5MW / 10MWh Grid-Forming Battery Energy Storage System (BESS) |  | 15d | 2027-12-13 | 2028-01-03 | A3030 | 290d | 0d | Major OFCI Critical Plant & Sea Freight Customs Clearance [120] | 13,500,000 |
| M3120 |  | Sea Freight Ocean Transit, Port Customs Clearance & Heavy Haulage to Site Gate | milestone | 0d | 2028-01-03 | 2028-01-03 | A3015, A3020, A3035, A3040, A3045, A3055, A3060, A3075, A3080, A3090, A3100 | 290d | 0d | Major OFCI Critical Plant & Sea Freight Customs Clearance [1] |  |
|  | 4.0-CIVIL | **4.0 Civil Engineering, Deep Bored Piling, Structural Steel & Envelope (QCVN 02)** |  |  | 2027-10-18 | 2029-02-12 |  |  |  |  |  |
|  | 4.1-SUB | **4.1 Deep Foundation Works, 750 Bored Piles & Underground Attenuation Tanks** |  |  | 2027-10-18 | 2028-05-29 |  |  |  |  |  |
| A4110 |  | Site Mobilisation, Enabling Earthworks, Temporary Power & Safety Fencing (Decree 06) |  | 30d | 2027-10-18 | 2027-11-29 | M1090 | 0d |  | Civil Enabling, 750 Bored Piles, Structural Frame & Envelope [240 h] | 1,600,000 |
| A4120 |  | Bulk Earthworks, Grading, Geotechnical Cavity Grouting & Subgrade Stabilisation |  | 55d | 2027-11-29 | 2028-02-14 | A4110 | 0d |  | Civil Enabling, 750 Bored Piles, Structural Frame & Envelope [440 h] | 2,200,000 |
| A4130 |  | Drill & Cast 750 Continuous Bored Piles Socketed into Hard Bedrock |  | 15d | 2028-02-14 | 2028-03-06 | A4120 | 0d |  | Civil Enabling, 750 Bored Piles, Structural Frame & Envelope [120 h] | 7,500,000 |
| A4140 |  | Construct Reinforced Concrete Pile Caps, Grade Beams & Waterproof Ground Slab |  | 40d | 2028-03-06 | 2028-05-01 | A4130 | 0d |  | Civil Enabling, 750 Bored Piles, Structural Frame & Envelope [320 h] | 4,600,000 |
| A4150 |  | Install Underground Stormwater Retention Tanks, Sedimentation Basins & Oil-Water Separators |  | 20d | 2028-05-01 | 2028-05-29 | A4140 | 0d |  | Civil Enabling, 750 Bored Piles, Structural Frame & Envelope [160 h] | 3,600,000 |

| ID | WBS | Activity | Type | Duration | Start | Finish | Predecessors | Total float | Free float | Resources | Cost |
| --- | --- | --- | --- | --- | --- | --- | --- | --- | --- | --- | --- |
|  | 4.2-SUPER | **4.2 Heavy Structural Steel Superstructure & Roof Plant Support Platforms** |  |  | 2028-05-29 | 2028-11-20 |  |  |  |  |  |
| A4210 |  | Structural Steel Delivery, Heavy Mobile Crane Mobilisation & Lifting Rigging Setup |  | 35d | 2028-05-29 | 2028-07-17 | A4150 | 0d |  | Civil Enabling, 750 Bored Piles, Structural Frame & Envelope [280 h] | 7,500,000 |
| A4220 |  | Erect Heavy Structural Steel Superstructure & Overhead MEP Distribution Gantries |  | 30d | 2028-07-17 | 2028-08-28 | A4210 | 0d |  | Civil Enabling, 750 Bored Piles, Structural Frame & Envelope [240 h] | 5,800,000 |
| A4230 |  | Install Precast Reinforced Concrete Floors & Data Hall Blast/Fire Partition Walls |  | 30d | 2028-08-28 | 2028-10-09 | A4220 | 0d |  | Civil Enabling, 750 Bored Piles, Structural Frame & Envelope [240 h] | 4,000,000 |
| A4240 |  | Fabricate & Erect Heavy Roof Plant Steel Platforms for Chillers & Cooling Towers |  | 30d | 2028-10-09 | 2028-11-20 | A4230 | 0d |  | Civil Enabling, 750 Bored Piles, Structural Frame & Envelope [240 h] | 2,700,000 |
| A4250 |  | Apply Passive Fireproofing (Intumescent Coating with 120-Min Rating under QCVN 06) |  | 20d | 2028-10-09 | 2028-11-06 | A4230 | 10d | 0d | Civil Enabling, 750 Bored Piles, Structural Frame & Envelope [160 h] | 1,300,000 |
|  | 4.3-ENVEL | **4.3 Insulated Wall Sandwich Panels, Membrane Roofing & QCVN 02 Weather Seal** |  |  | 2028-11-20 | 2029-02-12 |  |  |  |  |  |
| A4310 |  | Install Insulated Architectural Metal Wall Sandwich Panels (QCVN 02 Weather Resistance) |  | 40d | 2028-11-20 | 2029-01-15 | A4240, A4250 | 0d |  | Civil Enabling, 750 Bored Piles, Structural Frame & Envelope [320 h] | 5,800,000 |
| A4320 |  | Install Heavy-Duty Reinforced Waterproofing Membrane Roof System & Parapet Flashings |  | 25d | 2028-11-20 | 2028-12-25 | A4240 | 10d | 0d | Civil Enabling, 750 Bored Piles, Structural Frame & Envelope [200 h] | 4,000,000 |
| A4330 |  | Install Acoustic Louvre Enclosures & Stormproof Generator Ventilation Dampers |  | 5d | 2028-12-25 | 2029-01-01 | A4320 | 10d | 0d | Civil Enabling, 750 Bored Piles, Structural Frame & Envelope [40 h] | 2,800,000 |
| A4340 |  | Seal Building Envelope Penetrations & Conduct Negative-Pressure Airtightness Testing |  | 20d | 2029-01-15 | 2029-02-12 | A4310, A4330 | 0d |  | Civil Enabling, 750 Bored Piles, Structural Frame & Envelope [160 h] | 3,800,000 |
| M4350 |  | Building Shell Weathertight Enclosure Milestone | milestone | 0d | 2029-02-12 | 2029-02-12 | A4340, A4410, A4420, A4440, A4450 | 0d |  | Civil Enabling, 750 Bored Piles, Structural Frame & Envelope [1 h] |  |
|  | 4.4-SITE | **4.4 Substation Yard Civil Works, Heavy Logistics Roads, SuDS & Water Storage** |  |  | 2027-10-18 | 2027-12-27 |  |  |  |  |  |
| A4410 |  | Construct 110kV Substation Yard Foundations, Blast Firewall Barriers & Perimeter Retaining Walls |  | 40d | 2027-10-18 | 2027-12-13 | M1090 | 305d | 0d | Civil Enabling, 750 Bored Piles, Structural Frame & Envelope [320 h] | 2,900,000 |
| A4420 |  | Install Heavy-Duty High-Security Perimeter Fencing, PAS 68 Crash Barriers & CCTV Towers |  | 30d | 2027-10-18 | 2027-11-29 | M1090 | 315d | 0d | Civil Enabling, 750 Bored Piles, Structural Frame & Envelope [240 h] | 2,700,000 |
| A4430 |  | Pour Reinforced Concrete Pavements, Logistics Heavy Haulage Roads & Equipment Delivery Yard |  | 30d | 2027-10-18 | 2027-11-29 | M1090 | 295d | 0d | Civil Enabling, 750 Bored Piles, Structural Frame & Envelope [240 h] | 2,200,000 |
| A4450 |  | Install Dedicated Underground Fire Hydrant Water Loop & 500m3 Water Storage Reservoirs |  | 30d | 2027-10-18 | 2027-11-29 | M1090 | 315d | 0d | Civil Enabling, 750 Bored Piles, Structural Frame & Envelope [240 h] | 1,100,000 |
| A4440 |  | Construct Site Stormwater Drainage Network, Swales & Detention Retention Basin |  | 20d | 2027-11-29 | 2027-12-27 | A4430 | 295d | 0d | Civil Enabling, 750 Bored Piles, Structural Frame & Envelope [160 h] | 1,900,000 |
|  | 5.0-MEP | **5.0 MEP Installation, 110kV GIS Substation, White Space Halls 1-5 & Heat Reuse** |  |  | 2029-02-12 | 2029-09-24 |  |  |  |  |  |
|  | 5.1-ELEC | **5.1 110kV GIS Substation Installation, Dual 63MVA Transformers & MV Switchgear** |  |  | 2029-02-12 | 2029-06-25 |  |  |  |  |  |
| A5110 |  | Position Dual 63MVA 110kV/22kV Transformers & Concrete Oil-Containment Bund |  | 25d | 2029-02-12 | 2029-03-19 | M4350, M3120 | 0d |  | 110kV GIS Substation, White Space Electrical & Mechanical Fitout [200 h] | 5,000,000 |
| A5150 |  | Construct Substation Control Room, DC Battery Backups & EVN Telemetry Gateway |  | 20d | 2029-02-12 | 2029-03-12 | M4350 | 20d | 0d | 110kV GIS Substation, White Space Electrical & Mechanical Fitout [160 h] | 1,700,000 |
| A5120 |  | Install & SF6-Free Gas-Charge 110kV Gas Insulated Switchgear (GIS) Substation |  | 25d | 2029-03-19 | 2029-04-23 | A5110 | 0d |  | 110kV GIS Substation, White Space Electrical & Mechanical Fitout [200 h] | 6,600,000 |
| A5130 |  | Terminate 110kV High-Voltage XLPE Cables & EVN Substation Protection SCADA Interface |  | 30d | 2029-04-23 | 2029-06-04 | A5120 | 0d |  | 110kV GIS Substation, White Space Electrical & Mechanical Fitout [240 h] | 5,500,000 |
| A5140 |  | Erect 22kV Primary Distribution Switchboards, Busducts & Inter-Tie Breakers |  | 15d | 2029-06-04 | 2029-06-25 | A5130 | 0d |  | 110kV GIS Substation, White Space Electrical & Mechanical Fitout [120 h] | 4,200,000 |

| ID | WBS | Activity | Duration | Start | Finish | Predecessors | Total float | Free float | Resources | Cost |
| --- | --- | --- | --- | --- | --- | --- | --- | --- | --- | --- |
|  | 5.2-GEN | **5.2 Standby Generator Farm (20x 2.5MVA HVO), SCR Abatement & 5MW BESS** |  | 2029-02-12 | 2029-05-07 |  |  |  |  |  |
| A5210 |  | Position & Anchor 20x 2.5MVA Standby Diesel/HVO Generators on Inertia Spring Mounts | 30d | 2029-02-12 | 2029-03-26 | M4350 | 110d | 0d | 110kV GIS Substation, White Space Electrical & Mechanical Fitout [240 h] | 5,400,000 |
| A5220 |  | Install Generator Fuel Day Tanks, Stainless Steel Fuel Pipework & Leak Detection Systems | 35d | 2029-02-12 | 2029-04-02 | M4350, M3120 | 100d | 0d | 110kV GIS Substation, White Space Electrical & Mechanical Fitout [280 h] | 4,200,000 |
| A5250 |  | Install Dedicated Clean Agent Fire Extinguishing & Deflagration Exhaust Systems for BESS | 25d | 2029-02-12 | 2029-03-19 | M4350 | 135d | 0d | 110kV GIS Substation, White Space Electrical & Mechanical Fitout [200 h] | 2,200,000 |
| A5240 |  | Position 5MW / 10MWh BESS Enclosures, Power Conversion System (PCS) & Step-Up Transformers | 20d | 2029-03-26 | 2029-04-23 | A5210 | 110d | 0d | 110kV GIS Substation, White Space Electrical & Mechanical Fitout [160 h] | 4,000,000 |
| A5230 |  | Erect Generator Exhaust Flues, Mufflers & Selective Catalytic Reduction (SCR) Towers | 25d | 2029-04-02 | 2029-05-07 | A5220 | 100d | 0d | 110kV GIS Substation, White Space Electrical & Mechanical Fitout [200 h] | 3,700,000 |
|  | 5.3-MECH | **5.3 Water-Cooled Chiller Plant, Cooling Towers, CHW Headers & Heat Reuse Skids** |  | 2029-02-12 | 2029-08-13 |  |  |  |  |  |
| A5310 |  | Hoist & Mount Water-Cooled Chillers, Cooling Towers & Chilled Water Headers | 25d | 2029-02-12 | 2029-03-19 | M4350, M3120 | 30d | 0d | 110kV GIS Substation, White Space Electrical & Mechanical Fitout [200 h] | 6,200,000 |
| A5320 |  | Fabricate & Weld Primary Chilled Water Carbon Steel Piping Network (DN500) | 25d | 2029-02-12 | 2029-03-19 | M4350 | 30d | 0d | 110kV GIS Substation, White Space Electrical & Mechanical Fitout [200 h] | 4,800,000 |
| A5370 |  | Install Condenser Water Treatment, Automatic Blowdown & Chemical Dosing Systems | 30d | 2029-02-12 | 2029-03-26 | M4350 | 115d | 0d | 110kV GIS Substation, White Space Electrical & Mechanical Fitout [240 h] | 1,600,000 |
| A5380 |  | Perform Hydronic System Balancing & Acoustic Vibration Isolator Calibration | 20d | 2029-02-12 | 2029-03-12 | M4350 | 140d | 0d | 110kV GIS Substation, White Space Electrical & Mechanical Fitout [160 h] | 1,000,000 |
| A5330 |  | Install Variable Speed Chilled Water & Condenser Water Pump Skids with VFDs | 45d | 2029-03-19 | 2029-05-21 | A5310, A5320 | 30d | 0d | 110kV GIS Substation, White Space Electrical & Mechanical Fitout [360 h] | 4,000,000 |
| A5390 |  | Energise Mechanical Plant Motors & Commission Automated Chiller Plant Sequencer | 15d | 2029-03-26 | 2029-04-16 | A5370 | 115d | 0d | 110kV GIS Substation, White Space Electrical & Mechanical Fitout [120 h] | 800,000 |
| A5340 |  | Chemical Flush, Hydrostatically Pressure Test & Passivate Chilled Water Pipework | 20d | 2029-05-21 | 2029-06-18 | A5330 | 30d | 0d | 110kV GIS Substation, White Space Electrical & Mechanical Fitout [160 h] | 2,500,000 |
| A5350 |  | Apply Closed-Cell Elastomeric Insulation & Aluminum Weather Jacketing to Chilled Water Pipes | 15d | 2029-06-18 | 2029-07-09 | A5340 | 30d | 0d | 110kV GIS Substation, White Space Electrical & Mechanical Fitout [120 h] | 2,200,000 |
| A5360 |  | Install Plate Heat Exchangers for Energy Efficiency Optimization & Future Heat Reuse Skids | 25d | 2029-07-09 | 2029-08-13 | A5350 | 30d | 0d | 110kV GIS Substation, White Space Electrical & Mechanical Fitout [200 h] | 1,900,000 |
|  | 5.4-WS | **5.4 Data Halls 1-5 White Space Fit-Out: 2N UPS, Overhead Busways & In-Row CRAHs** |  | 2029-02-12 | 2029-08-27 |  |  |  |  |  |
| A5430 |  | Data Hall 1 (9MW): Erect 800mm Heavy-Duty Raised Access Floor & Overhead Busways | 35d | 2029-02-12 | 2029-04-02 | M4350 | 45d | 0d | 110kV GIS Substation, White Space Electrical & Mechanical Fitout [280 h] | 2,500,000 |
| A5440 |  | Data Hall 2 (9MW): Erect 800mm Heavy-Duty Raised Access Floor & Overhead Busways | 35d | 2029-02-12 | 2029-04-02 | M4350 | 45d | 0d | 110kV GIS Substation, White Space Electrical & Mechanical Fitout [280 h] | 2,500,000 |
| A5450 |  | Data Hall 3 (9MW): Erect 800mm Heavy-Duty Raised Access Floor & Overhead Busways | 35d | 2029-02-12 | 2029-04-02 | M4350 | 45d | 0d | 110kV GIS Substation, White Space Electrical & Mechanical Fitout [280 h] | 2,500,000 |
| A5460 |  | Data Hall 4 (9MW): Erect 800mm Heavy-Duty Raised Access Floor & Overhead Busways | 35d | 2029-02-12 | 2029-04-02 | M4350 | 45d | 0d | 110kV GIS Substation, White Space Electrical & Mechanical Fitout [280 h] | 2,500,000 |
| A5468 |  | Data Hall 5 (9MW): Erect 800mm Heavy-Duty Raised Access Floor & Overhead Busways | 35d | 2029-02-12 | 2029-04-02 | M4350 | 45d | 0d | 110kV GIS Substation, White Space Electrical & Mechanical Fitout [280 h] | 2,500,000 |
| A5405 |  | Install Main 400V Low-Voltage Switchgear (MSB-A/B) & Static Transfer Switches (STS) | 25d | 2029-03-12 | 2029-04-16 | A5150, M4350, M3120 | 20d | 0d | 110kV GIS Substation, White Space Electrical & Mechanical Fitout [200 h] | 4,000,000 |
| A5435 |  | Data Hall 1 (9MW): Install 18x EC-Fan In-Row CRAH Units & Hot Aisle Containment Pods | 25d | 2029-04-02 | 2029-05-07 | A5430 | 45d | 0d | 110kV GIS Substation, White Space Electrical & Mechanical Fitout [200 h] | 2,800,000 |
| A5445 |  | Data Hall 2 (9MW): Install 18x EC-Fan In-Row CRAH Units & Hot Aisle Containment Pods | 25d | 2029-04-02 | 2029-05-07 | A5440 | 45d | 0d | 110kV GIS Substation, White Space Electrical & Mechanical Fitout [200 h] | 2,800,000 |
| A5455 |  | Data Hall 3 (9MW): Install 18x EC-Fan In-Row CRAH Units & Hot Aisle Containment Pods | 25d | 2029-04-02 | 2029-05-07 | A5450 | 45d | 0d | 110kV GIS Substation, White Space Electrical & Mechanical Fitout [200 h] | 2,800,000 |
| A5465 |  | Data Hall 4 (9MW): Install 18x EC-Fan In-Row CRAH Units & Hot Aisle Containment Pods | 25d | 2029-04-02 | 2029-05-07 | A5460 | 45d | 0d | 110kV GIS Substation, White Space Electrical & Mechanical Fitout [200 h] | 2,800,000 |
| A5469 |  | Data Hall 5 (9MW): Install 18x EC-Fan In-Row CRAH Units & Hot Aisle Containment Pods | 25d | 2029-04-02 | 2029-05-07 | A5468 | 45d | 0d | 110kV GIS Substation, White Space Electrical & Mechanical Fitout [200 h] | 2,800,000 |
| A5410 |  | Position & Wire 45x 1000kVA Static Modular 2N UPS Units & Maintenance Bypass Boards | 35d | 2029-04-16 | 2029-06-04 | A5405 | 55d | 0d | 110kV GIS Substation, White Space Electrical & Mechanical Fitout [280 h] | 4,600,000 |
| A5415 |  | Install Floor-Mounted Power Distribution Units (PDUs) & Remote Power Panels (RPPs) | 25d | 2029-04-16 | 2029-05-21 | A5405 | 20d | 0d | 110kV GIS Substation, White Space Electrical & Mechanical Fitout [200 h] | 3,300,000 |
| A5482 |  | Complete Hall 1 Clean-Room Epoxy Floor Coating, Sealant & Architectural Finishes | 15d | 2029-05-07 | 2029-05-28 | A5435 | 45d | 0d | 110kV GIS Substation, White Space Electrical & Mechanical Fitout [120 h] | 900,000 |
| A5484 |  | Complete Hall 2 Clean-Room Epoxy Floor Coating, Sealant & Architectural Finishes | 15d | 2029-05-07 | 2029-05-28 | A5445 | 45d | 0d | 110kV GIS Substation, White Space Electrical & Mechanical Fitout [120 h] | 900,000 |
| A5486 |  | Complete Hall 3 Clean-Room Epoxy Floor Coating, Sealant & Architectural Finishes | 15d | 2029-05-07 | 2029-05-28 | A5455 | 45d | 0d | 110kV GIS Substation, White Space Electrical & Mechanical Fitout [120 h] | 900,000 |
| A5488 |  | Complete Hall 4 Clean-Room Epoxy Floor Coating, Sealant & Architectural Finishes | 15d | 2029-05-07 | 2029-05-28 | A5465 | 45d | 0d | 110kV GIS Substation, White Space Electrical & Mechanical Fitout [120 h] | 900,000 |
| A5489 |  | Complete Hall 5 Clean-Room Epoxy Floor Coating, Sealant & Architectural Finishes | 15d | 2029-05-07 | 2029-05-28 | A5469 | 45d | 0d | 110kV GIS Substation, White Space Electrical & Mechanical Fitout [120 h] | 900,000 |
| A5470 |  | Pull Vertical Copper Busbar Feeders, Tap-Off Boxes & Heavy Cable Tray Infrastructure | 25d | 2029-05-21 | 2029-06-25 | A5415 | 20d | 0d | 110kV GIS Substation, White Space Electrical & Mechanical Fitout [200 h] | 2,200,000 |
| A5490 |  | Install High-Efficiency LED Lighting, Emergency Exit Battery Packs & QCVN 06 Firestops | 20d | 2029-05-28 | 2029-06-25 | A5482, A5484, A5486, A5488, A5489 | 45d | 0d | 110kV GIS Substation, White Space Electrical & Mechanical Fitout [160 h] | 1,800,000 |
| A5420 |  | Install Battery Racks, Off-Gas Thermal Detectors & Dedicated Hydrogen Extraction Fans | 25d | 2029-06-04 | 2029-07-09 | A5410 | 55d | 0d | 110kV GIS Substation, White Space Electrical & Mechanical Fitout [200 h] | 3,100,000 |
| A5475 |  | Install Equipotential Grounding Grid & Overhead Fiber Optic Raceway Baskets | 20d | 2029-06-25 | 2029-07-23 | A5470 | 20d | 0d | 110kV GIS Substation, White Space Electrical & Mechanical Fitout [160 h] | 1,400,000 |
| A5495 |  | Install Data Hall Security Air-Locks, Biometric Mantraps & Rated Steel Doors | 20d | 2029-06-25 | 2029-07-23 | A5490 | 45d | 0d | 110kV GIS Substation, White Space Electrical & Mechanical Fitout [160 h] | 1,600,000 |
| A5480 |  | Fit Out Dual Diverse Meet-Me-Rooms (MMR-A/B) & Optical Distribution Frames (ODF) | 25d | 2029-07-23 | 2029-08-27 | A5475 | 20d | 0d | 110kV GIS Substation, White Space Electrical & Mechanical Fitout [200 h] | 1,800,000 |

| ID | WBS | Activity | Type | Duration | Start | Finish | Predecessors | Total float | Free float | Resources | Cost |
| --- | --- | --- | --- | --- | --- | --- | --- | --- | --- | --- | --- |
|  | 5.5-ICT | **5.5 EPMS, BMS DDC Automation, Optical Fiber Ring, Life Safety & SOC Facility** |  |  | 2029-02-12 | 2029-09-24 |  |  |  |  |  |
| A5510 |  | Install BACnet/IP Building Management System (BMS) DDC Panels, Actuators & Sensors |  | 30d | 2029-02-12 | 2029-03-26 | M4350 | 90d | 0d | 110kV GIS Substation, White Space Electrical & Mechanical Fitout [240 h] | 2,000,000 |
| A5530 |  | Install Very Early Smoke Detection Apparatus (VESDA-E) Sampling Pipework in Data Halls |  | 25d | 2029-02-12 | 2029-03-19 | M4350 | 100d | 0d | 110kV GIS Substation, White Space Electrical & Mechanical Fitout [200 h] | 1,100,000 |
| A5540 |  | Install Clean Agent (Inergen / Novec 1230) Gas Extinguishing Systems in Electrical Suites |  | 25d | 2029-02-12 | 2029-03-19 | M4350 | 100d | 0d | 110kV GIS Substation, White Space Electrical & Mechanical Fitout [200 h] | 1,300,000 |
| A5550 |  | Install Double-Interlock Pre-Action Sprinkler Piping & Deluge Valves in White Space |  | 30d | 2029-02-12 | 2029-03-26 | M4350 | 95d | 0d | 110kV GIS Substation, White Space Electrical & Mechanical Fitout [240 h] | 1,200,000 |
| A5570 |  | Program & Test Addressable Fire Alarm Control Panels & Automated Gas Extinguishing Matrix |  | 15d | 2029-03-26 | 2029-04-16 | A5530, A5540, A5550 | 95d | 0d | 110kV GIS Substation, White Space Electrical & Mechanical Fitout [120 h] | 600,000 |
| A5580 |  | Install Post-Discharge Smoke Extraction System & Stairwell Pressurisation Fans |  | 20d | 2029-04-16 | 2029-05-14 | A5570 | 95d | 0d | 110kV GIS Substation, White Space Electrical & Mechanical Fitout [160 h] | 500,000 |
| A5520 |  | Deploy Electrical Power Monitoring System (EPMS) Revenue-Grade Meters & PUE Telemetry |  | 25d | 2029-06-25 | 2029-07-30 | A5140, A5415 | 0d |  | 110kV GIS Substation, White Space Electrical & Mechanical Fitout [200 h] | 2,200,000 |
| A5560 |  | Terminate Structured Cabling & Fiber Optic Ring Backbone for BMS/EPMS Networks |  | 20d | 2029-07-30 | 2029-08-27 | A5510, A5520 | 0d |  | 110kV GIS Substation, White Space Electrical & Mechanical Fitout [160 h] | 1,000,000 |
| A5590 |  | Commission Security Operations Center (SOC) Master Monitoring Console & CCTV Surveillance |  | 20d | 2029-08-27 | 2029-09-24 | A5560 | 0d |  | 110kV GIS Substation, White Space Electrical & Mechanical Fitout [160 h] | 800,000 |
| M5595 |  | MEP Infrastructure & Data Hall White Space Fit-Out Completion Milestone | milestone | 0d | 2029-09-24 | 2029-09-24 | A5140, A5230, A5240, A5250, A5380, A5360, A5390, A5420, A5480, A5495, A5580, A5590 | 0d |  | 110kV GIS Substation, White Space Electrical & Mechanical Fitout [1 h] |  |
|  | 6.0-CX | **6.0 Commissioning Levels 1-5, 45MW Integrated Systems Testing & Statutory Inspection** |  |  | 2028-01-03 | 2030-02-25 |  |  |  |  |  |
|  | 6.1-L12 | **6.1 Cx Levels 1 & 2: Factory Witness Testing (FAT) & Site Receipt Quality Assurance** |  |  | 2028-01-03 | 2028-03-13 |  |  |  |  |  |
| A6110 |  | Cx Level 1: Witnessed Factory Acceptance Testing (FAT) Reports & Quality Verification |  | 20d | 2028-01-03 | 2028-01-31 | M3120 | 400d | 0d | Commissioning Authority, 45MW IST Load Banks & Testing Fuel [160 h] | 550,000 |
| A6120 |  | Cx Level 2: Site Receipt Inspection, Rigging Quality Assurance & Storage Preservation |  | 15d | 2028-01-31 | 2028-02-21 | A6110 | 400d | 0d | Commissioning Authority, 45MW IST Load Banks & Testing Fuel [120 h] | 600,000 |
| A6130 |  | Quality Assurance Compliance Verification Dossier under Decree 06/2021/ND-CP |  | 15d | 2028-02-21 | 2028-03-13 | A6120 | 400d | 0d | Commissioning Authority, 45MW IST Load Banks & Testing Fuel [120 h] | 450,000 |
|  | 6.2-L3 | **6.2 Cx Level 3: Pre-Functional Static Testing, Loop Checks & Substation Hipot** |  |  | 2029-09-24 | 2029-10-15 |  |  |  |  |  |
| A6210 |  | Cx Level 3: Cold Loop Point-to-Point Continuity, Insulation Resistance & Torque Verification |  | 15d | 2029-09-24 | 2029-10-15 | A6130, M5595 | 0d |  | Commissioning Authority, 45MW IST Load Banks & Testing Fuel [120 h] | 750,000 |
| A6220 |  | Substation 110kV GIS Protection Relay Secondary Injection & High-Potential (Hipot) Testing |  | 15d | 2029-09-24 | 2029-10-15 | M5595 | 0d |  | Commissioning Authority, 45MW IST Load Banks & Testing Fuel [120 h] | 1,000,000 |
| A6230 |  | Chilled Water Flushing Chemical Analysis & Hydronic Flow Balancing Sign-Off |  | 15d | 2029-09-24 | 2029-10-15 | M5595 | 0d |  | Commissioning Authority, 45MW IST Load Banks & Testing Fuel [120 h] | 700,000 |
| A6240 |  | Standby Generator Pre-Start Mechanical, Lubrication & Electrical Interlock Verification |  | 15d | 2029-09-24 | 2029-10-15 | M5595 | 0d |  | Commissioning Authority, 45MW IST Load Banks & Testing Fuel [120 h] | 550,000 |
| A6250 |  | Static Energisation Safety Permit & Lockout/Tagout (LOTO) Clearance Procedure |  | 10d | 2029-09-24 | 2029-10-08 | M5595 | 5d | 0d | Commissioning Authority, 45MW IST Load Banks & Testing Fuel [80 h] | 500,000 |
| M6260 |  | 110kV Substation Static Energisation Complete Milestone | milestone | 0d | 2029-10-15 | 2029-10-15 | A6210, A6220, A6230, A6240, A6250 | 0d |  | Commissioning Authority, 45MW IST Load Banks & Testing Fuel [1 h] |  |
|  | 6.3-L4 | **6.3 Cx Level 4: Functional Dynamic Systems Testing & Generator Step-Load Trials** |  |  | 2029-10-08 | 2029-12-10 |  |  |  |  |  |
| A6360 |  | EPMS / BMS Sensor End-to-End Calibration & Critical Alarm Escalation Verification |  | 10d | 2029-10-08 | 2029-10-22 | A6250 | 35d | 0d | Commissioning Authority, 45MW IST Load Banks & Testing Fuel [80 h] | 500,000 |
| A6310 |  | Cx Level 4: 110kV Live Energisation, Phasing Verification & Main MV Switchgear Commissioning |  | 10d | 2029-10-15 | 2029-10-29 | M6260 | 0d |  | Commissioning Authority, 45MW IST Load Banks & Testing Fuel [80 h] | 850,000 |
| A6320 |  | Generator Step-Load Testing (25%, 50%, 75%, 100%, 110%) & Automatic Fuel Transfer Trials |  | 25d | 2029-10-29 | 2029-12-03 | A6310 | 5d | 0d | Commissioning Authority, 45MW IST Load Banks & Testing Fuel [200 h] | 850,000 |
| A6330 |  | 5MW BESS Dynamic Fast-Frequency Response & Microgrid Grid-Forming Integration Testing |  | 15d | 2029-10-29 | 2029-11-19 | A6310 | 15d | 0d | Commissioning Authority, 45MW IST Load Banks & Testing Fuel [120 h] | 650,000 |
| A6340 |  | Chiller Plant Automatic Lead-Lag Sequencing & Cooling Failure Ride-Through Testing |  | 15d | 2029-10-29 | 2029-11-19 | A6310 | 0d |  | Commissioning Authority, 45MW IST Load Banks & Testing Fuel [120 h] | 850,000 |
| A6350 |  | Data Halls 1-5 UPS Module Load Bank Thermal Dissipation & Battery Discharge Proof |  | 15d | 2029-11-19 | 2029-12-10 | A6340 | 0d |  | Commissioning Authority, 45MW IST Load Banks & Testing Fuel [120 h] | 600,000 |
| M6370 |  | Cx Level 4 Functional Systems Testing Complete Milestone | milestone | 0d | 2029-12-10 | 2029-12-10 | A6320, A6330, A6350, A6360 | 0d |  | Commissioning Authority, 45MW IST Load Banks & Testing Fuel [1 h] |  |

| ID | WBS | Activity | Type | Duration | Start | Finish | Predecessors | Total float | Free float | Resources | Cost |
| --- | --- | --- | --- | --- | --- | --- | --- | --- | --- | --- | --- |
|  | 6.4-L5 | **6.4 Cx Level 5: 45MW 48-Hour Integrated Systems Testing (IST) Blackout Simulation** |  |  | 2029-12-10 | 2030-02-25 |  |  |  |  |  |
| A6410 |  | Deliver & Connect 45MW Portable Resistive-Reactive Load Banks & Server Simulators |  | 12d | 2029-12-10 | 2029-12-26 | M6370 | 0d |  | Commissioning Authority, 45MW IST Load Banks & Testing Fuel [96 h] | 1,000,000 |
| A6420 |  | 45MW Full Facility Heat Load Soak Test (100% Load across 5 Halls / 24 Hours) |  | 12d | 2029-12-26 | 2030-01-11 | A6410 | 0d |  | Commissioning Authority, 45MW IST Load Banks & Testing Fuel [96 h] | 1,300,000 |
| A6430 |  | 45MW 48-Hour Integrated Systems Testing (IST) under Full Thermal & Electrical Load |  | 8d | 2030-01-11 | 2030-01-23 | A6420 | 0d |  | Commissioning Authority, 45MW IST Load Banks & Testing Fuel [64 h] | 1,700,000 |
| A6440 |  | Black Building Utility Outage Simulation & Generator Fast Black-Start Under Full Load |  | 8d | 2030-01-23 | 2030-02-04 | A6430 | 0d |  | Commissioning Authority, 45MW IST Load Banks & Testing Fuel [64 h] | 1,300,000 |
| A6450 |  | Complete Cooling Loss Scenario & Thermal Energy Storage (TES) Ride-Through Demonstration |  | 7d | 2030-02-04 | 2030-02-13 | A6440 | 0d |  | Commissioning Authority, 45MW IST Load Banks & Testing Fuel [56 h] | 750,000 |
| A6460 |  | EPMS / BMS Automated Emergency Matrix Validation & SCADA Redundant Server Failover Proof |  | 8d | 2030-02-13 | 2030-02-25 | A6450 | 0d |  | Commissioning Authority, 45MW IST Load Banks & Testing Fuel [64 h] | 550,000 |
| M6470 |  | 45MW Integrated Systems Testing (IST) Blackout Simulation Passed Milestone | milestone | 0d | 2030-02-25 | 2030-02-25 | A6460, A6530 | 0d |  | Commissioning Authority, 45MW IST Load Banks & Testing Fuel [1 h] |  |
|  | 6.5-OPS | **6.5 Operations Readiness, Facility Staff SOP Training & As-Built Safety File** |  |  | 2028-01-03 | 2029-12-17 |  |  |  |  |  |
| A6540 |  | Conduct Full Emergency Drill Simulations (Fire, Power Loss & Cyber Breach Scenarios) |  | 15d | 2028-01-03 | 2028-01-24 | M3120 | 590d | 0d | Commissioning Authority, 45MW IST Load Banks & Testing Fuel [120 h] | 80,000 |
| A6510 |  | Operations & Maintenance Facility Staff Training on SOP, AOP and EOP Procedures |  | 20d | 2029-09-24 | 2029-10-22 | M5595 | 75d | 0d | Commissioning Authority, 45MW IST Load Banks & Testing Fuel [160 h] | 160,000 |
| A6520 |  | Statutory As-Built Dossier Compilation & Construction Safety File (Decree 06/2021) |  | 30d | 2029-10-15 | 2029-11-26 | M6260 | 50d | 0d | Commissioning Authority, 45MW IST Load Banks & Testing Fuel [240 h] | 130,000 |
| A6530 |  | Spare Parts Inventory Handover & Critical Capital Equipment Spares Delivery |  | 15d | 2029-11-26 | 2029-12-17 | A6510, A6520 | 50d | 0d | Commissioning Authority, 45MW IST Load Banks & Testing Fuel [120 h] | 130,000 |
|  | 7.0-COD | **7.0 Fire Police PC07 Acceptance, EVN Live Grid Sync & Commercial Operation (COD)** |  |  | 2030-02-25 | 2030-05-20 |  |  |  |  |  |
| A7010 |  | Fire Prevention and Fighting Police Department (PC07) Final Inspection & Certificate |  | 15d | 2030-02-25 | 2030-03-18 | M6470 | 0d |  | Statutory Fire PC07 Certification, DOC Acceptance & EVN Sync [120 h] | 400,000 |
| A7020 |  | Department of Construction (DOC) Statutory Completion Acceptance Approval (Decree 06) |  | 15d | 2030-02-25 | 2030-03-18 | M6470 | 30d | 0d | Statutory Fire PC07 Certification, DOC Acceptance & EVN Sync [120 h] | 1,100,000 |
| A7030 |  | EVN / National Power Dispatch (NLDC/NSMO) Grid Synchronization & COD Agreement |  | 15d | 2030-03-18 | 2030-04-08 | A7010, A1070 | 0d |  | Statutory Fire PC07 Certification, DOC Acceptance & EVN Sync [120 h] | 1,350,000 |
| A7040 |  | ANSI/TIA-942-B Rated 3 & Uptime Tier III Facility Certification Audit Verification |  | 15d | 2030-04-08 | 2030-04-29 | A7030 | 0d |  | Statutory Fire PC07 Certification, DOC Acceptance & EVN Sync [120 h] | 1,200,000 |
| A7050 |  | Client Practical Completion Handover, Facility Keys Release & Operations Transition |  | 15d | 2030-04-29 | 2030-05-20 | A6540, A7010, A7020, A7040 | 0d |  | Statutory Fire PC07 Certification, DOC Acceptance & EVN Sync [120 h] | 450,000 |
| M7060 |  | Commercial Operation Date (COD), Handover & Safety File Formal Milestone | milestone | 0d | 2030-05-20 | 2030-05-20 | A7050 | 0d |  | Statutory Fire PC07 Certification, DOC Acceptance & EVN Sync [1 h] |  |
